# Cronograma V2

Schedule from MS Project, 2024-04-27 to 2024-10-25.

## Calendars

- Estándar: Mon-Fri 09:00-13:00, 15:00-19:00; Sat-Sun off.

## Resources

| Resource | Group |
| --- | --- |
| Emmanuel Julio | Backend |
| Luci Oses | Backend |
| Claudio Damico | Backend |
| Matias Ayala | Fronem |
| Matias Benites | Fronem |
| Matias Suares | Fronem |
| Daniel Campos | SEO y Marketing |
| Lucas Olivera | Arquitectura |
| Líder técnico |  |
| Luciano Ghelfi | Diseño grafico UX |
| Mauro Salinas | Devops |
| Tamara Cardenas | Devops |
| Pablo Sabatino | DBA |
| Daiana Cabrera | Testing |
| Javier Splinter | Testing |
| Mariana Lopez | Testing |
| Belen Julio | Diseñador grafico UX |

## Schedule

| ID | WBS | Task | Duration | Start | Finish | Predecessors | Total slack | Free slack | Constraint | Resources | Work |
| --- | --- | --- | --- | --- | --- | --- | --- | --- | --- | --- | --- |
| 1 | 1 | Desarrollo de software | 1d? | 2024-04-29 | 2024-04-29 |  | 0d |  |  |  |  |
| 2 | 2 | **1. Diseño de base de datos y configuracion de cloud.** | 3.75d | 2024-04-30 | 2024-05-03 | 1 | 0d |  |  |  | 50h |
| 3 | 2.1 | 1.1. DER final del modelo de base de datos | 20h | 2024-04-30 | 2024-05-02 | 1 | 1.25d |  |  | Pablo Sabatino | 20h |
| 4 | 2.2 | 1.2. Clusterización y configuración del CLOUD | 30h | 2024-04-30 | 2024-05-03 | 1 | 0d |  |  | Mauro Salinas | 30h |
| 5 | 3 | **2. Diseño arquitectura back end** | 18.75d | 2024-05-03 | 2024-05-30 | 3 | 0d |  |  |  | 600h |
| 6 | 3.1 | 2.1. Arquitectura en microservicios planificada, arquitectura CLOUD y arquitectura de paquetes estratégica para satisfacer servicios | 150h | 2024-05-03 | 2024-05-30 | 3, 4 | 0d |  |  | Emmanuel Julio; Lucas Olivera; Mauro Salinas; Luci Oses | 600h |
| 7 | 4 | **3. Diseño arquitectura front end** | 21.25d | 2024-05-30 | 2024-06-28 |  | 85.12d |  |  |  | 510h |
| 8 | 4.1 | 3.1. Arquitectura hexagonal evolutiva con integración de módulo de lectura archivo ADOBE.XD y mapeo a archivo de salida JSX. | 170h | 2024-05-30 | 2024-06-28 | 6 | 85.12d |  |  | Lucas Olivera; Matias Ayala; Matias Benites | 510h |
| 9 | 5 | **5. Módulo Login** | 9.5d | 2024-05-30 | 2024-06-12 |  | 0d |  |  |  | 93h |
| 10 | 5.1 | **5.1. ABM USUARIOS** | 0.38d | 2024-05-30 | 2024-05-30 |  | 0d |  |  |  | 12h |
| 11 | 5.1.1 | 5.1.1. Insertar usuarios | 3h | 2024-05-30 | 2024-05-30 | 6 | 0d |  |  | Claudio Damico | 3h |
| 12 | 5.1.2 | 5.1.2. Editar usuarios | 3h | 2024-05-30 | 2024-05-30 | 6 | 0d |  |  | Emmanuel Julio | 3h |
| 13 | 5.1.3 | 5.1.3. Borrar usuarios | 3h | 2024-05-30 | 2024-05-30 | 6 | 0d |  |  | Luci Oses | 3h |
| 14 | 5.1.4 | 5.1.4. Obtener usuarios | 3h | 2024-05-30 | 2024-05-30 | 6 | 0d |  |  | Claudio Damico | 3h |
| 15 | 5.2 | 5.2. Servicio Login back end con seguridad JWT & comprobación de errores | 15h | 2024-05-30 | 2024-06-03 | 10 | 0d |  |  | Emmanuel Julio | 15h |
| 16 | 5.3 | 5.3. Integración de servicios front end en google, facebook, GOOGLE +, Slack e instagram. | 20h | 2024-06-03 | 2024-06-06 | 15 | 0d |  |  | Luci Oses | 20h |
| 17 | 5.4 | 5.4. Vista completa front end con integración de back end | 30h | 2024-06-06 | 2024-06-11 | 15, 16 | 0d |  |  | Matias Suares | 30h |
| 18 | 5.5 | 5.5. Testeo modulo completo | 8h | 2024-06-12 | 2024-06-12 | 17 | 0d |  |  | Mariana Lopez; Daiana Cabrera | 16h |
| 19 | 6 | **6. Módulo Home** | 77d | 2024-04-29 | 2024-08-13 |  | 0d |  |  |  | 98h |
| 20 | 6.1 | 6.1. Concepto UX de diseño | 10h | 2024-04-29 | 2024-04-30 |  | 31.75d | 0d |  | Belen Julio | 10h |
| 21 | 6.2 | 6.2. Servicios back end involucrando todas las funcionalidades del concepto de diseño. | 42h | 2024-06-13 | 2024-08-07 | 6, 18, 20 | 0d |  | start no earlier than 2024-04-19 | Emmanuel Julio | 42h |
| 22 | 6.3 | 6.3. Vista front end completa con integración back end. | 30h | 2024-08-07 | 2024-08-12 | 21 | 0d |  |  | Matias Ayala | 30h |
| 23 | 6.4 | 6.4. Testeo modulo completo | 8h | 2024-08-13 | 2024-08-13 | 22 | 0d |  |  | Javier Splinter; Mariana Lopez | 16h |
| 24 | 7 | **7. Módulo Compras** | 85.75d | 2024-04-30 | 2024-08-27 |  | 36.88d |  |  |  | 146h |
| 25 | 7.1 | 7.1. Concepto UX de diseño | 10h | 2024-04-30 | 2024-05-01 | 20 | 103d | 0d |  | Luciano Ghelfi | 10h |

| ID | WBS | Task | Duration | Start | Finish | Predecessors | Total slack | Free slack | Resources | Work |
| --- | --- | --- | --- | --- | --- | --- | --- | --- | --- | --- |
| 26 | 7.2 | **7.2. Servicio back end de compras con las integraciones de método de pago:** | 3d | 2024-08-14 | 2024-08-16 |  | 0d |  |  | 64h |
| 27 | 7.2.1 | 7.2.1. Transferencia. | 12h | 2024-08-14 | 2024-08-15 | 23 | 0d |  | Claudio Damico | 12h |
| 28 | 7.2.2 | 7.2.2. Mercado pago | 12h | 2024-08-14 | 2024-08-15 | 23 | 0d |  | Emmanuel Julio | 12h |
| 29 | 7.2.3 | 7.2.3. Crypto | 16h | 2024-08-14 | 2024-08-15 | 23 | 1d |  | Luci Oses | 16h |
| 30 | 7.2.4 | 7.2.4. Tarjeta de crédito | 12h | 2024-08-15 | 2024-08-16 | 23, 28 | 0d |  | Emmanuel Julio | 12h |
| 31 | 7.2.5 | 7.2.5. Tarjeta de débito. | 12h | 2024-08-15 | 2024-08-16 | 23, 27 | 0d |  | Claudio Damico | 12h |
| 32 | 7.3 | 7.3.Integración de prevención de fraude de tarjeta. | 16h | 2024-08-19 | 2024-08-20 | 30, 31 | 41.88d | 0d | Lucas Olivera | 16h |
| 33 | 7.4 | 7.4. Vista front end completa con integración de back end | 40h | 2024-08-19 | 2024-08-23 | 26 | 0d |  | Matias Ayala | 40h |
| 34 | 7.5 | 7.5. Testeo modulo completo | 16h | 2024-08-26 | 2024-08-27 | 33 | 0d |  | Daiana Cabrera | 16h |
| 35 | 8 | **8. Módulo de Búsqueda y Filtrado** | 94.25d? | 2024-05-01 | 2024-09-10 |  | 30.62d | 0d |  | 103h |
| 36 | 8.1 | 8.1. Concepto UX de diseño | 10h | 2024-05-01 | 2024-05-02 | 25 | 103d | 0d | Matias Benites | 10h |
| 37 | 8.2 | 8.2. Servicio back end de búsqueda y filtrado contemplando las 15 formas de filtros diferentes incluyendo filtros dinámicos y estáticos. | 30h | 2024-08-28 | 2024-09-02 | 34 | 0d |  | Emmanuel Julio | 30h |
| 38 | 8.3 | 8.3. Concepto UX de integración de Landing page de categorías. | 15h | 2024-05-02 | 2024-05-06 | 36 | 121.75d |  | Belen Julio | 15h |
| 39 | 8.4 | 8.4. Vista front end completa con integración de back end. | 40h | 2024-09-02 | 2024-09-09 | 37 | 0d |  | Matias Suares | 40h |
| 40 | 8.5 | 8.5. Testeo modulo completo | 1d? | 2024-09-09 | 2024-09-10 | 39 | 0d |  | Javier Splinter | 8h |
| 41 | 9 | **9. Módulo Back Office User.** | 98.62d | 2024-05-02 | 2024-09-18 |  | 5.62d |  |  | 55h |
| 42 | 9.1 | 9.1. Concepto UX diseño. | 10h | 2024-05-02 | 2024-05-03 | 36 | 103d | 0d | Luciano Ghelfi | 10h |
| 43 | 9.2 | 9.2. Servicios de back end para la obtención de datos de ventas por usuario. | 12h | 2024-09-10 | 2024-09-12 | 40 | 0d |  | Claudio Damico | 12h |
| 44 | 9.3 | 9.3. Vista front end completa con integración de back end. | 25h | 2024-09-12 | 2024-09-17 | 43 | 0d |  | Matias Benites | 25h |
| 45 | 9.4 | 9.4. Testeo modulo completo | 8h | 2024-09-17 | 2024-09-18 | 44 | 0d |  | Javier Splinter | 8h |
| 46 | 10 | **10. Back Office Admin** | 105.62d | 2024-05-06 | 2024-09-30 |  | 0d |  |  | 100h |
| 47 | 10.1 | 10.1. Concepto UX diseño. | 10h | 2024-05-06 | 2024-05-07 | 42 | 103d | 0d | Luciano Ghelfi | 10h |
| 48 | 10.2 | **10.2. ABM VENTAS** | 0.5d | 2024-09-18 | 2024-09-18 |  | 0d |  |  | 16h |
| 49 | 10.2.1 | 10.2.1.Insertar venta. | 4h | 2024-09-18 | 2024-09-18 | 45 | 0d |  | Emmanuel Julio | 4h |
| 50 | 10.2.2 | 10.2.2. Borrar venta. | 4h | 2024-09-18 | 2024-09-18 | 45 | 0d |  | Claudio Damico | 4h |
| 51 | 10.2.3 | 10.2.3. Editar venta. | 4h | 2024-09-18 | 2024-09-18 | 45 | 0d |  | Luci Oses | 4h |
| 52 | 10.2.4 | 10.2.4. Obtener venta. | 4h | 2024-09-18 | 2024-09-18 | 45 | 0d |  | Luci Oses | 4h |
| 53 | 10.3 | 10.3. Servicios back end para la obtención y filtrado de ventas. | 20h | 2024-09-18 | 2024-09-23 | 48 | 0d |  | Emmanuel Julio | 20h |
| 54 | 10.4 | 10.4. Servicios back end para la obtención de estadísticas. | 12h | 2024-09-18 | 2024-09-20 | 48 | 1d |  | Claudio Damico | 12h |
| 55 | 10.5 | 10.5. Vista front end completa con integración de back end. | 30h | 2024-09-23 | 2024-09-27 | 53, 54 | 0d |  | Matias Suares | 30h |
| 56 | 10.6 | 10.6. Testeo modulo completo | 12h | 2024-09-27 | 2024-09-30 | 55 | 0d |  | Mariana Lopez | 12h |

| ID | WBS | Task | Type | Duration | Start | Finish | Predecessors | Total slack | Free slack | Resources | Work |
| --- | --- | --- | --- | --- | --- | --- | --- | --- | --- | --- | --- |
| 57 | 11 | **11. Módulo Producto** |  | 111.62d | 2024-05-07 | 2024-10-09 |  | 0d |  |  | 68h |
| 58 | 11.1 | 11.1. Concepto UX diseño. |  | 10h | 2024-05-07 | 2024-05-08 | 47 | 103d | 0d | Luciano Ghelfi | 10h |
| 59 | 11.2 | 11.2. Servicios back end para la obtención de datos del producto, cálculo de envio y cálculo de pagos. |  | 20h | 2024-09-30 | 2024-10-03 | 56 | 0d |  | Claudio Damico | 20h |
| 60 | 11.3 | 11.3. Vista front end completa con integración de back end & integración SEO. |  | 30h | 2024-10-03 | 2024-10-08 | 59 | 0d |  | Claudio Damico | 30h |
| 61 | 11.4 | 11.4. Testeo modulo completo |  | 8h | 2024-10-08 | 2024-10-09 | 60 | 0d |  | Javier Splinter | 8h |
| 62 | 12 | **12. Modulo Ofertas** |  | 116.12d | 2024-05-08 | 2024-10-17 |  | 0d |  |  | 65h |
| 63 | 12.1 | 12.1. Concepto UX diseño USER & BACK OFFICE |  | 10h | 2024-05-08 | 2024-05-09 | 58 | 103d | 0d | Belen Julio | 10h |
| 64 | 12.2 | **12.2. ABM Ofertas** |  | 0.38d | 2024-10-09 | 2024-10-10 |  | 0d |  |  | 12h |
| 65 | 12.2.1 | 12.2.1. Insertar oferta. |  | 3h | 2024-10-09 | 2024-10-10 | 61 | 0d |  | Claudio Damico | 3h |
| 66 | 12.2.2 | 12.2.2. Editar oferta. |  | 3h | 2024-10-09 | 2024-10-10 | 61 | 0d |  | Emmanuel Julio | 3h |
| 67 | 12.2.3 | 12.2.3. Borrar oferta. |  | 3h | 2024-10-09 | 2024-10-10 | 61 | 0d |  | Luci Oses | 3h |
| 68 | 12.2.4 | 12.2.4. Obtener oferta. |  | 3h | 2024-10-09 | 2024-10-10 | 61 | 0d |  | Luci Oses | 3h |
| 69 | 12.3 | 12.3. Servicios back end para la obtención de productos de oferta. |  | 5h | 2024-10-10 | 2024-10-10 | 64 | 0d |  | Claudio Damico | 5h |
| 70 | 12.4 | 12.4. Vista front end completa en back office ADMIN con integración de back end. |  | 30h | 2024-10-10 | 2024-10-16 | 69 | 0d |  | Matias Benites | 30h |
| 71 | 12.5 | 12.5. Testeo modulo completo |  | 8h | 2024-10-16 | 2024-10-17 | 70 | 0d |  | Daiana Cabrera | 8h |
| 72 | 13 | **13. Módulo Ventas** |  | 0d? | 2024-04-27 | 2024-04-27 |  | 0d |  |  |  |
| 73 | 13.1 | 13.1. Concepto UX diseñO | manual | 1d | 2024-04-27 | 2024-04-27 |  |  |  |  |  |
| 74 | 13.2 | 13.2. Servicios back end que están involucrados en todo el circuito lógico de compras, incluyendo los pagos con tarjeta y la prevención de fraude. | manual | 1d | 2024-04-27 | 2024-04-27 |  |  |  |  |  |
| 75 | 13.3 | 13.3. Vista front end completa con integración de back end | manual | 1d | 2024-04-27 | 2024-04-27 |  |  |  |  |  |
| 76 | 13.4 | 13.4. Testeo modulo completo | manual | 1d? | 2024-04-27 | 2024-04-27 |  |  |  |  |  |
| 77 | 14 | **14. Módulo notificaciones** |  | 121.12d | 2024-05-09 | 2024-10-25 |  | 0d |  |  | 84h |
| 78 | 14.1 | 14.1. Concepto UX diseño USER & BACK OFFICE |  | 10h | 2024-05-09 | 2024-05-10 | 63 | 103d | 0d | Luciano Ghelfi | 10h |
| 79 | 14.2 | **14.2. ABM NOTIFICACIONES** |  | 0.88d | 2024-10-17 | 2024-10-18 |  | 0d |  |  | 19h |
| 80 | 14.2.1 | 14.2.1. Insertar notificaciones. |  | 7h | 2024-10-17 | 2024-10-18 | 71 | 0d |  | Claudio Damico | 7h |
| 81 | 14.2.2 | 14.2.2. Editar notificaciones. |  | 4h | 2024-10-17 | 2024-10-18 | 71 | 0.38d |  | Emmanuel Julio | 4h |
| 82 | 14.2.3 | 14.2.3. Borrar notificaciones. |  | 4h | 2024-10-17 | 2024-10-18 | 71 | 0.38d |  | Luci Oses | 4h |
| 83 | 14.2.4 | 14.2.4. Obtener notificaciones. |  | 4h | 2024-10-17 | 2024-10-18 | 71 | 0.38d |  | Claudio Damico | 4h |
| 84 | 14.3 | 14.3. Servicios back end para la inserción masiva de notificaciones. |  | 12h | 2024-10-18 | 2024-10-21 | 79 | 3.88d |  | Emmanuel Julio | 12h |
| 85 | 14.4 | 14.4. Servicios back end para la obtención de notificaciones del usuario. |  | 5h | 2024-10-18 | 2024-10-21 | 79 | 0d |  | Luci Oses | 5h |
| 86 | 14.5 | 14.5. Vista front end dentro de back office admin completa con integración de back end. |  | 30h | 2024-10-21 | 2024-10-24 | 85, 56 | 0d |  | Matias Benites | 30h |
| 87 | 14.6 | 14.6. Testeo modulo completo |  | 8h | 2024-10-24 | 2024-10-25 | 86 | 0d |  | Javier Splinter | 8h |

| ID | WBS | Task | Duration | Start | Finish | Predecessors | Total slack | Free slack | Resources | Work |
| --- | --- | --- | --- | --- | --- | --- | --- | --- | --- | --- |
| 88 | 15 | **15. Módulo Mailing** | 78d | 2024-05-13 | 2024-08-28 |  | 41.88d |  |  | 333h |
| 89 | 15.1 | 15.1. Configuración de servidor de correos. | 10h | 2024-05-30 | 2024-05-31 | 6 | 90.75d | 0d | Mauro Salinas | 10h |
| 90 | 15.2 | 15.2. Cumplimiento de políticas de seguridad y de contenido para el envio de correos sin entrar en black list. | 48h | 2024-08-21 | 2024-08-28 | 32 | 41.88d |  | Lucas Olivera | 48h |
| 91 | 15.3 | 15.3. Diseño UX para cada prototipo de correo de Marketing. | 20h | 2024-05-13 | 2024-05-15 | 78 | 103d | 0d | Belen Julio | 20h |
| 92 | 15.4 | 15.4. Diseño UX para cada correo por venta realizada, cambios de estado de venta, de pago y de envio. | 20h | 2024-05-15 | 2024-05-17 | 91 | 103d | 0d | Luciano Ghelfi | 20h |
| 93 | 15.5 | 15.5. Servicios back end para la creación de correos por Carrito abandonado. | 20h | 2024-05-20 | 2024-05-22 | 92 | 103d | 12.25d | Claudio Damico; Matias Ayala | 40h |
| 94 | 15.6 | 15.6. Servicios back end para la creación de correos por descuentos. | 20h | 2024-05-31 | 2024-06-05 | 89 | 90.75d | 0d | Luci Oses; Matias Benites | 40h |
| 95 | 15.7 | 15.7. Servicios back end para la creación de correos por ofertas. | 20h | 2024-06-05 | 2024-06-07 | 94 | 90.75d | 0d | Emmanuel Julio; Matias Suares | 40h |
| 96 | 15.8 | 15.8. Servicios back end para la creación de correos por noticias propias | 20h | 2024-06-07 | 2024-06-12 | 95, 93 | 90.75d | 0d | Claudio Damico; Matias Ayala | 40h |
| 97 | 15.9 | 15.9. Servicios back end con la integración de envío de correos por creación de venta o cambio de estado. | 20h | 2024-06-12 | 2024-06-14 | 96 | 90.75d | 0d | Luci Oses; Matias Benites | 40h |
| 98 | 15.10 | 15.10. Vista front dentro de back office admin completa con integración de back end | 35h | 2024-06-14 | 2024-06-21 | 97 | 90.75d |  | Matias Suares | 35h |
| 99 | 16 | **4. Análisis de SEO** | 119.12d | 2024-04-29 | 2024-10-11 |  | 10.75d |  |  | 50h |
| 100 | 16.1 | **4.1. Análisis estructural de posicionamiento orgánico de las vistas.** | 119.12d | 2024-04-29 | 2024-10-11 |  | 10.75d |  |  | 50h |
| 101 | 16.1.1 | 4.1.1. Home. | 10h | 2024-08-14 | 2024-08-15 | 19 | 51.62d |  | Daniel Campos | 10h |
| 102 | 16.1.2 | 4.1.2. Producto. | 10h | 2024-10-09 | 2024-10-11 | 57 | 10.75d |  | Daniel Campos | 10h |
| 103 | 16.1.3 | 4.1.3. Búsqueda y filtrado. | 10h | 2024-09-10 | 2024-09-11 | 35 | 30.62d | 0d | Daniel Campos | 10h |
| 104 | 16.1.4 | 4.1.4. Landing page categorías. | 10h | 2024-09-12 | 2024-09-13 | 103 | 30.62d |  | Daniel Campos | 10h |
| 105 | 16.1.5 | 4.1.5. Landing page marcas. | 10h | 2024-04-29 | 2024-04-30 |  | 128.62d |  | Daniel Campos | 10h |
